# DLP & DC Project Plan

Schedule from MS Project XML, 2026-04-01 to 2026-09-16.

## Calendars

- Standard: Mon-Fri 08:00-12:00, 13:00-17:00; Sat-Sun off.

## Resources

| Resource |
| --- |
| John Smith (Application Security) |
| NES Customer |
| Rachel Green (Security Operations Center) |
| Sahara NET Partner |
| Sara El Moursy |
| Sarah Jenkins (Cloud Security) |
| Vinayak Sonkavada (CyberKnight) |

## Schedule

| ID | WBS | Task | Duration | Start | Finish | Predecessors | Complete | Resources | Work |
| --- | --- | --- | --- | --- | --- | --- | --- | --- | --- |
| 1 | 1 | Phase 1 - Project Initiation & Planning | 2d | 2026-04-01 08:00 | 2026-04-02 17:00 |  | 100% |  | 16h |
| 2 | 2 | Phase 2- Design & Documentation | 25d | 2026-04-05 08:00 | 2026-04-29 17:00 |  | 57% |  | 200h |
| 3 | 3 | Phase 3- Implementation & UAT | 77d | 2026-06-29 08:00 | 2026-09-13 17:00 |  |  |  | 616h |
| 4 | 4 | **Phase 4- Project Closure** | 4d | 2026-09-13 08:00 | 2026-09-16 17:00 |  |  |  | 32h |
| 5 | 1.1 | Kickoff Meeting | 1d | 2026-04-01 08:00 | 2026-04-01 17:00 |  | 100% | Sara El Moursy; Vinayak Sonkavada (CyberKnight); NES Customer; Sahara NET Partner | 8h |
| 6 | 1.2 | Kickoff Deck / Project Plan submission | 1d | 2026-04-01 08:00 | 2026-04-01 17:00 | 5 | 100% | Sara El Moursy; Vinayak Sonkavada (CyberKnight) | 8h |
| 7 | 1.3 | Milestone 1 Sign-Off submission& acceptance | 1d | 2026-04-02 08:00 | 2026-04-02 17:00 | 6 | 100% | Sara El Moursy; Vinayak Sonkavada (CyberKnight) | 8h |
| 8 | 2.1 | Workshop Session on Design and discussion on Pre/Requisites | 1d | 2026-04-05 08:00 | 2026-04-05 17:00 | 7 | 100% | Sara El Moursy; Vinayak Sonkavada (CyberKnight) | 8h |
| 9 | 2.2 | Develop & Submit the HLD, Use Case & Pre-requisites Document | 3d | 2026-04-06 08:00 | 2026-04-08 17:00 | 8 | 100% | Sara El Moursy; Vinayak Sonkavada (CyberKnight) | 24h |
| 10 | 2.3 | Walkthrough Session of HLD & Use case doucment | 7d | 2026-04-12 08:00 | 2026-04-20 17:00 | 9 | 100% | Sara El Moursy; Vinayak Sonkavada (CyberKnight); NES Customer; Sahara NET Partner | 56h |
| 11 | 2.4 | Submit updated the HLD, Use Case | 1d | 2026-04-21 08:00 | 2026-04-21 17:00 | 10 | 100% |  | 8h |
| 12 | 2.5 | Design & Use case document approval | 5d | 2026-04-22 08:00 | 2026-04-28 17:00 | 11 |  | Sara El Moursy; Sahara NET Partner; NES Customer | 40h |
| 13 | 2.6 | Milestone 2 Sign-off submission & acceptance | 1d | 2026-04-28 08:00 | 2026-04-28 17:00 | 12 |  | Sarah Jenkins (Cloud Security) | 8h |
| 14 | 2.7 | Finalize Project Plan | 1d | 2026-04-29 08:00 | 2026-04-29 17:00 | 13 |  | Rachel Green (Security Operations Center) | 8h |
| 15 | 3.1 | Prerequisites readiness | 1d | 2026-06-29 08:00 | 2026-06-29 17:00 | 14FF |  |  | 8h |
| 16 | 3.2 | Prerequisites Validation Session upon receiving readiness confirmation | 1d | 2026-06-30 08:00 | 2026-06-30 17:00 | 12, 15 |  | Vinayak Sonkavada (CyberKnight); NES Customer | 8h |
| 17 | 3.3 | **DC Implementation** | 29.6d | 2026-07-01 08:00 | 2026-08-11 17:00 | 16 |  | Vinayak Sonkavada (CyberKnight); NES Customer | 236.8h |
| 18 | 3.3.1 | **Fortra DCS Analytics Collector** | 3d | 2026-07-01 08:00 | 2026-07-05 17:00 |  |  | Vinayak Sonkavada (CyberKnight); NES Customer | 24h |
| 19 | 3.3.1.1 | Installation of Fortra DCS Analytics Collector | 1d | 2026-07-01 08:00 | 2026-07-01 17:00 | 16 |  | Vinayak Sonkavada (CyberKnight); NES Customer | 8h |
| 20 | 3.3.1.2 | Creating Virtual Directory for configuration deployment | 1d | 2026-07-02 08:00 | 2026-07-02 17:00 | 19 |  | Vinayak Sonkavada (CyberKnight); NES Customer | 8h |
| 21 | 3.3.1.3 | Enabling Directory Browsing and setting MIME Type | 1d | 2026-07-05 08:00 | 2026-07-05 17:00 | 20 |  | Vinayak Sonkavada (CyberKnight); NES Customer | 8h |
| 22 | 3.3.2 | **Fortra DCS Admin Console** | 1.2d | 2026-07-06 08:00 | 2026-07-07 17:00 | 18 |  | Vinayak Sonkavada (CyberKnight); NES Customer | 9.6h |
| 23 | 3.3.2.1 | Defining the Data Classification Schema | 1d | 2026-07-06 08:00 | 2026-07-06 17:00 | 28 |  | Vinayak Sonkavada (CyberKnight); NES Customer | 8h |
| 24 | 3.3.2.2 | Defining the Data Classification Schema | 1d | 2026-07-06 08:00 | 2026-07-06 17:00 | 28 |  | Vinayak Sonkavada (CyberKnight); NES Customer | 8h |
| 25 | 3.3.2.3 | Installation of Admin Console on a dedicated server | 0.2d | 2026-07-06 08:00 | 2026-07-06 17:00 | 21 |  | Vinayak Sonkavada (CyberKnight); NES Customer | 1.6h |
| 26 | 3.3.2.4 | Adding&activating the licenses for the installed modules | 0.2d | 2026-07-06 08:00 | 2026-07-06 17:00 | 25 |  | Vinayak Sonkavada (CyberKnight); NES Customer | 1.6h |
| 27 | 3.3.2.5 | Connecting and Testing of the connection to Database Server in Admin Settings | 0.2d | 2026-07-06 08:00 | 2026-07-06 17:00 | 26 |  | Vinayak Sonkavada (CyberKnight); NES Customer | 1.6h |
| 28 | 3.3.2.6 | Create/Import of configuration and assign the licenses to the configuration | 0.2d | 2026-07-06 08:00 | 2026-07-06 17:00 | 27 |  | Vinayak Sonkavada (CyberKnight); NES Customer | 1.6h |
| 29 | 3.3.2.7 | Classification policies to be created/updated according to the best practices/agreed use cases on Fortra DCS Administration console | 0.2d | 2026-07-07 08:00 | 2026-07-07 17:00 | 23, 31, 24 |  | Vinayak Sonkavada (CyberKnight); NES Customer | 1.6h |

Notes:
- 5: WBS: 1.1.1
- 6: WBS: 1.1.2
- 7: WBS: 1.1.3
- 8: WBS: 1.2.1
- 9: WBS: 1.2.2
- 10: WBS: 1.2.3
- 11: WBS: 1.2.4
- 12: WBS: 1.2.5
- 13: WBS: 1.2.6
- 14: WBS: 1.2.7
- 15: WBS: 1.3.1
- 16: WBS: 1.3.2
- 17: WBS: 1.3.3
- 18: WBS: 1.3.3.1
- 19: WBS: 1.3.3.1.1
- 20: WBS: 1.3.3.1.2
- 21: WBS: 1.3.3.1.3
- 22: WBS: 1.3.3.2
- 23: WBS: 1.3.3.2.5
- 24: WBS: 1.3.3.2.5
- 25: WBS: 1.3.3.2.1
- 26: WBS: 1.3.3.2.2
- 27: WBS: 1.3.3.2.3
- 28: WBS: 1.3.3.2.4
- 29: WBS: 1.3.3.2.6

| ID | WBS | Task | Duration | Start | Finish | Predecessors | Resources | Work |
| --- | --- | --- | --- | --- | --- | --- | --- | --- |
| 30 | 3.3.3 | **Fortra DCS Policy Manager** | 12.8d | 2026-07-07 08:00 | 2026-07-23 17:00 | 22 | Vinayak Sonkavada (CyberKnight); NES Customer | 102.4h |
| 31 | 3.3.3.1 | Defining the Data Classification Schema | 1d | 2026-07-08 08:00 | 2026-07-09 17:00 | 35, 28 | Vinayak Sonkavada (CyberKnight); NES Customer | 8h |
| 32 | 3.3.3.2 | Create SSL Certificates for Binding, Token& Encryption. | 0.2d | 2026-07-07 08:00 | 2026-07-07 17:00 |  | Vinayak Sonkavada (CyberKnight); NES Customer | 1.6h |
| 33 | 3.3.3.3 | Installation of DCS Policy Manager | 0.2d | 2026-07-07 08:00 | 2026-07-07 17:00 | 32 | Vinayak Sonkavada (CyberKnight); NES Customer | 1.6h |
| 34 | 3.3.3.4 | Adding& activating the licenses for the installed modules | 0.2d | 2026-07-07 08:00 | 2026-07-07 17:00 | 33 | Vinayak Sonkavada (CyberKnight); NES Customer | 1.6h |
| 35 | 3.3.3.5 | Backup blank file and create new configuration | 1d | 2026-07-07 08:00 | 2026-07-08 17:00 | 34 | Vinayak Sonkavada (CyberKnight); NES Customer | 8h |
| 36 | 3.3.3.6 | Defining the Data Classification Schema | 1d | 2026-07-08 08:00 | 2026-07-09 17:00 | 35 | Vinayak Sonkavada (CyberKnight); NES Customer | 8h |
| 37 | 3.3.3.7 | Classification policies to be created according to agreed use cases | 10.2d | 2026-07-09 08:00 | 2026-07-23 17:00 | 31, 36 | Vinayak Sonkavada (CyberKnight); NES Customer | 81.6h |
| 38 | 3.3.4 | **Fortra DCS Reporting Console** | 3.5d | 2026-07-26 08:00 | 2026-07-29 17:00 | 30 | Vinayak Sonkavada (CyberKnight); NES Customer | 28h |
| 39 | 3.3.4.1 | Installation of .NET Windows Server Hosting and Desktop Runtime | 0.5d | 2026-07-26 08:00 | 2026-07-26 17:00 |  | Vinayak Sonkavada (CyberKnight); NES Customer | 4h |
| 40 | 3.3.4.2 | Installation of Fortra DCS Data Classification Reporting Console | 0.5d | 2026-07-26 08:00 | 2026-07-26 17:00 | 39 | Vinayak Sonkavada (CyberKnight); NES Customer | 4h |
| 41 | 3.3.4.3 | Creating and Configuring Roles Database using Prepare Database tool | 0.5d | 2026-07-27 08:00 | 2026-07-27 17:00 | 40 | Vinayak Sonkavada (CyberKnight); NES Customer | 4h |
| 42 | 3.3.4.4 | Creating and Configuring Document Database using Prepare Database tool | 0.5d | 2026-07-27 08:00 | 2026-07-27 17:00 | 41 | Vinayak Sonkavada (CyberKnight); NES Customer | 4h |
| 43 | 3.3.4.5 | Configuring Connection string to Titus_Reporting Database | 0.5d | 2026-07-28 08:00 | 2026-07-28 17:00 | 42 | Vinayak Sonkavada (CyberKnight); NES Customer | 4h |
| 44 | 3.3.4.6 | Importing the Fortra DCS Intelligence Packs | 0.5d | 2026-07-28 08:00 | 2026-07-28 17:00 | 43 | Vinayak Sonkavada (CyberKnight); NES Customer | 4h |
| 45 | 3.3.4.7 | Configuring Sample Dashboards available in Intelligence Pack | 0.5d | 2026-07-29 08:00 | 2026-07-29 17:00 | 44 | Vinayak Sonkavada (CyberKnight); NES Customer | 4h |
| 46 | 3.3.5 | **Fortra DCS for DaR** | 4.2d | 2026-07-29 08:00 | 2026-08-04 17:00 | 38 | Vinayak Sonkavada (CyberKnight); NES Customer | 33.6h |
| 47 | 3.3.5.1 | Installation of IIS URL Rewrite Module 2 | 0.5d | 2026-07-29 08:00 | 2026-07-29 17:00 |  | Vinayak Sonkavada (CyberKnight); NES Customer | 4h |
| 48 | 3.3.5.2 | Installation of Fortra DCS for DaR | 0.5d | 2026-07-30 08:00 | 2026-07-30 17:00 | 47 | Vinayak Sonkavada (CyberKnight); NES Customer | 4h |
| 49 | 3.3.5.3 | Configuration of Titus Illuminate | 0.5d | 2026-07-30 08:00 | 2026-07-30 17:00 | 48 | Vinayak Sonkavada (CyberKnight); NES Customer | 4h |
| 50 | 3.3.5.4 | Customer to provide access to data repository and scan account | 0.2d | 2026-08-02 08:00 | 2026-08-02 17:00 | 49 | Vinayak Sonkavada (CyberKnight); NES Customer | 1.6h |
| 51 | 3.3.5.5 | Create Illuminate Discovery Scans | 0.5d | 2026-08-02 08:00 | 2026-08-02 17:00 | 50 | Vinayak Sonkavada (CyberKnight); NES Customer | 4h |
| 52 | 3.3.5.6 | Configure Policies for Illuminate | 0.5d | 2026-08-02 08:00 | 2026-08-03 17:00 | 51 | Vinayak Sonkavada (CyberKnight); NES Customer | 4h |
| 53 | 3.3.5.7 | Configure and demonstrate illuminate scans | 0.5d | 2026-08-03 08:00 | 2026-08-03 17:00 | 52 | Vinayak Sonkavada (CyberKnight); NES Customer | 4h |
| 54 | 3.3.5.8 | Configure Sample Dashboards available in Intelligence Pack | 0.5d | 2026-08-03 08:00 | 2026-08-04 17:00 | 53 | Vinayak Sonkavada (CyberKnight); NES Customer | 4h |
| 55 | 3.3.5.9 | Test and Review the Scan Results | 0.5d | 2026-08-04 08:00 | 2026-08-04 17:00 | 54 | Vinayak Sonkavada (CyberKnight); NES Customer | 4h |

Notes:
- 30: WBS: 1.3.3.3
- 31: WBS: 1.3.3.3.5
- 32: WBS: 1.3.3.3.1
- 33: WBS: 1.3.3.3.2
- 34: WBS: 1.3.3.3.3
- 35: WBS: 1.3.3.3.4
- 36: WBS: 1.3.3.3.5
- 37: WBS: 1.3.3.3.6
- 38: WBS: 1.3.3.4
- 39: WBS: 1.3.3.4.1
- 40: WBS: 1.3.3.4.2
- 41: WBS: 1.3.3.4.3
- 42: WBS: 1.3.3.4.4
- 43: WBS: 1.3.3.4.5
- 44: WBS: 1.3.3.4.6
- 45: WBS: 1.3.3.4.7
- 46: WBS: 1.3.3.5
- 47: WBS: 1.3.3.5.1
- 48: WBS: 1.3.3.5.2
- 49: WBS: 1.3.3.5.3
- 50: WBS: 1.3.3.5.4
- 51: WBS: 1.3.3.5.5
- 52: WBS: 1.3.3.5.6
- 53: WBS: 1.3.3.5.7
- 54: WBS: 1.3.3.5.8
- 55: WBS: 1.3.3.5.9

| ID | WBS | Task | Duration | Start | Finish | Predecessors | Resources | Work |
| --- | --- | --- | --- | --- | --- | --- | --- | --- |
| 56 | 3.3.6 | **Fortra DCS Services** | 1.4d | 2026-08-04 08:00 | 2026-08-06 17:00 | 46 | Vinayak Sonkavada (CyberKnight); NES Customer | 11.2h |
| 57 | 3.3.6.1 | Creation of SSL certificate (.pfx) | 0.2d | 2026-08-04 08:00 | 2026-08-04 17:00 |  | Vinayak Sonkavada (CyberKnight); NES Customer | 1.6h |
| 58 | 3.3.6.2 | Installation of Fortra DCS Services on dedicated server | 0.2d | 2026-08-04 08:00 | 2026-08-05 17:00 | 57 | Vinayak Sonkavada (CyberKnight); NES Customer | 1.6h |
| 59 | 3.3.6.3 | Verification of the working of Fortra DCS Services | 0.5d | 2026-08-05 08:00 | 2026-08-05 17:00 | 58 | Vinayak Sonkavada (CyberKnight); NES Customer | 4h |
| 60 | 3.3.6.4 | Verification of the configuration fetch by Fortra DCS Services | 0.5d | 2026-08-05 08:00 | 2026-08-06 17:00 | 59 | Vinayak Sonkavada (CyberKnight); NES Customer | 4h |
| 61 | 3.3.7 | **Fortra DCS for OWA** | 3.5d | 2026-08-06 08:00 | 2026-08-11 17:00 | 56 | Vinayak Sonkavada (CyberKnight); NES Customer | 28h |
| 62 | 3.3.7.1 | Install DCS for OWA add-in on the Services Server | 1d | 2026-08-06 08:00 | 2026-08-09 17:00 |  | Vinayak Sonkavada (CyberKnight); NES Customer | 8h |
| 63 | 3.3.7.2 | Upload/sideload the OutlookOfficeAddin manifest.xml file using O365 Admin Center (customer) | 0.5d | 2026-08-09 08:00 | 2026-08-09 17:00 | 62 | Vinayak Sonkavada (CyberKnight); NES Customer | 4h |
| 64 | 3.3.7.3 | Register DCS for OWA application for Exchange Online mailboxes from (customer) | 0.5d | 2026-08-09 08:00 | 2026-08-10 17:00 | 63 | Vinayak Sonkavada (CyberKnight); NES Customer | 4h |
| 65 | 3.3.7.4 | Configuration of DCS for OWA rules in the Admin console | 1d | 2026-08-10 08:00 | 2026-08-11 17:00 | 64 | Vinayak Sonkavada (CyberKnight); NES Customer | 8h |
| 66 | 3.3.7.5 | Testing the configuration on the pilot OWA user machine | 0.5d | 2026-08-11 08:00 | 2026-08-11 17:00 | 65 | Vinayak Sonkavada (CyberKnight); NES Customer | 4h |
| 67 | 3.4 | **DLP Implementation** | 15.1d | 2026-08-11 08:00 | 2026-09-01 17:00 | 17 | John Smith (Application Security) | 120.8h |
| 68 | 3.4.1 | **Fortra eDLP Installation and Configuration** | 8.2d | 2026-08-11 08:00 | 2026-08-23 17:00 |  | Vinayak Sonkavada (CyberKnight); NES Customer | 65.6h |
| 69 | 3.4.1.1 | Verify the pre-requisite | 0.2d | 2026-08-11 08:00 | 2026-08-11 17:00 |  | Vinayak Sonkavada (CyberKnight); NES Customer | 1.6h |
| 70 | 3.4.1.2 | Verify Windows roles and features | 0.2d | 2026-08-11 08:00 | 2026-08-11 17:00 | 69 | Vinayak Sonkavada (CyberKnight); NES Customer | 1.6h |
| 71 | 3.4.1.3 | Verify Microsoft tools - C++ redistributable, .net framework 4.0, 4.7 | 0.2d | 2026-08-12 08:00 | 2026-08-12 17:00 | 70 | John Smith (Application Security) | 1.6h |
| 72 | 3.4.1.4 | Install the DGMC | 0.2d | 2026-08-12 08:00 | 2026-08-12 17:00 | 71 | Vinayak Sonkavada (CyberKnight); NES Customer | 1.6h |
| 73 | 3.4.1.5 | Configure the SQL database credentials | 0.5d | 2026-08-12 08:00 | 2026-08-12 17:00 | 72 | Vinayak Sonkavada (CyberKnight); NES Customer | 4h |
| 74 | 3.4.1.6 | Configure windows service account credentials | 0.5d | 2026-08-12 08:00 | 2026-08-13 17:00 | 73 | Vinayak Sonkavada (CyberKnight); NES Customer | 4h |
| 75 | 3.4.1.7 | Configure HTTPS for accessing DGMC Console& Agent Comm | 0.5d | 2026-08-13 08:00 | 2026-08-13 17:00 | 74 | Vinayak Sonkavada (CyberKnight); NES Customer | 4h |
| 76 | 3.4.1.8 | Integration with AD& SMTP | 0.5d | 2026-08-13 08:00 | 2026-08-16 17:00 | 75 | Vinayak Sonkavada (CyberKnight); NES Customer | 4h |
| 77 | 3.4.1.9 | Integration with SIEM | 1d | 2026-08-16 08:00 | 2026-08-17 17:00 | 76 | Vinayak Sonkavada (CyberKnight); NES Customer | 8h |
| 78 | 3.4.1.10 | Integration with Syslog and Data classification solution | 1d | 2026-08-17 08:00 | 2026-08-18 17:00 | 77 | Vinayak Sonkavada (CyberKnight); NES Customer | 8h |
| 79 | 3.4.1.11 | Configure the best practice use case for E-DLP | 0.5d | 2026-08-18 08:00 | 2026-08-18 17:00 | 78 | Vinayak Sonkavada (CyberKnight); NES Customer | 4h |
| 80 | 3.4.1.12 | Deploy the agent | 0.5d | 2026-08-18 08:00 | 2026-08-19 17:00 | 79 | Vinayak Sonkavada (CyberKnight); NES Customer | 4h |
| 81 | 3.4.1.13 | Create agent package for windows | 0.5d | 2026-08-19 08:00 | 2026-08-19 17:00 | 80 | Vinayak Sonkavada (CyberKnight); NES Customer | 4h |
| 82 | 3.4.1.14 | Deploy agents on 1 endpoint | 0.5d | 2026-08-19 08:00 | 2026-08-20 17:00 | 81 | Vinayak Sonkavada (CyberKnight); NES Customer | 4h |
| 83 | 3.4.1.15 | Test the configured policy in 1 machine | 0.2d | 2026-08-20 08:00 | 2026-08-20 17:00 | 82 | Vinayak Sonkavada (CyberKnight); NES Customer | 1.6h |
| 84 | 3.4.1.16 | Trigger the configured policy in 1 machine | 0.2d | 2026-08-20 08:00 | 2026-08-20 17:00 | 83 | Vinayak Sonkavada (CyberKnight); NES Customer | 1.6h |
| 85 | 3.4.1.17 | Validate the incidents | 0.5d | 2026-08-20 08:00 | 2026-08-23 17:00 | 84 | Vinayak Sonkavada (CyberKnight); NES Customer | 4h |
| 86 | 3.4.1.18 | Schedule upto 2 reports as per the requirements | 0.5d | 2026-08-23 08:00 | 2026-08-23 17:00 | 85 | Vinayak Sonkavada (CyberKnight); NES Customer | 4h |

Notes:
- 56: WBS: 1.3.3.6
- 57: WBS: 1.3.3.6.1
- 58: WBS: 1.3.3.6.2
- 59: WBS: 1.3.3.6.3
- 60: WBS: 1.3.3.6.4
- 61: WBS: 1.3.3.7
- 62: WBS: 1.3.3.7.1
- 63: WBS: 1.3.3.7.2
- 64: WBS: 1.3.3.7.3
- 65: WBS: 1.3.3.7.4
- 66: WBS: 1.3.3.7.5
- 67: WBS: 1.3.4
- 68: WBS: 1.3.4.1
- 69: WBS: 1.3.4.1.1
- 70: WBS: 1.3.4.1.2
- 71: WBS: 1.3.4.1.3
- 72: WBS: 1.3.4.1.4
- 73: WBS: 1.3.4.1.5
- 74: WBS: 1.3.4.1.6
- 75: WBS: 1.3.4.1.7
- 76: WBS: 1.3.4.1.8
- 77: WBS: 1.3.4.1.9
- 78: WBS: 1.3.4.1.10
- 79: WBS: 1.3.4.1.11
- 80: WBS: 1.3.4.1.12
- 81: WBS: 1.3.4.1.13
- 82: WBS: 1.3.4.1.14
- 83: WBS: 1.3.4.1.15
- 84: WBS: 1.3.4.1.16
- 85: WBS: 1.3.4.1.17
- 86: WBS: 1.3.4.1.18

| ID | WBS | Task | Duration | Start | Finish | Predecessors | Resources | Work |
| --- | --- | --- | --- | --- | --- | --- | --- | --- |
| 87 | 3.4.2 | **Fortra nDLP Appliance Installation and Configuration** | 6.9d | 2026-08-23 08:00 | 2026-09-01 17:00 | 68 | Vinayak Sonkavada (CyberKnight); NES Customer | 55.2h |
| 88 | 3.4.2.1 | Verify the pre-requisite for nDLP server | 0.2d | 2026-08-23 08:00 | 2026-08-23 17:00 |  | Vinayak Sonkavada (CyberKnight); NES Customer | 1.6h |
| 89 | 3.4.2.2 | Deploy the nDLP in appliance | 0.5d | 2026-08-24 08:00 | 2026-08-24 17:00 | 88 | Vinayak Sonkavada (CyberKnight); NES Customer | 4h |
| 90 | 3.4.2.3 | Install/Run the component in nDLP appliance | 0.5d | 2026-08-24 08:00 | 2026-08-24 17:00 | 89 | Vinayak Sonkavada (CyberKnight); NES Customer | 4h |
| 91 | 3.4.2.4 | Login to the web console and configure management console | 0.2d | 2026-08-25 08:00 | 2026-08-25 17:00 | 90 | Vinayak Sonkavada (CyberKnight); NES Customer | 1.6h |
| 92 | 3.4.2.5 | Integrating the other components with management console | 1d | 2026-08-25 08:00 | 2026-08-26 17:00 | 91 | Vinayak Sonkavada (CyberKnight); NES Customer | 8h |
| 93 | 3.4.2.6 | SMTP and ICAP inspection integration for network DLP | 1d | 2026-08-26 08:00 | 2026-08-27 17:00 | 92 | Vinayak Sonkavada (CyberKnight); NES Customer | 8h |
| 94 | 3.4.2.7 | Configure the data source for discovery server | 1d | 2026-08-27 08:00 | 2026-08-30 17:00 | 93 | Vinayak Sonkavada (CyberKnight); NES Customer | 8h |
| 95 | 3.4.2.8 | Configure the UAT policy and trigger it | 1d | 2026-08-30 08:00 | 2026-08-31 17:00 | 94 | Vinayak Sonkavada (CyberKnight); NES Customer | 8h |
| 96 | 3.4.2.9 | Verify the traffic, incidents and reports | 0.5d | 2026-08-31 08:00 | 2026-08-31 17:00 | 95 | Vinayak Sonkavada (CyberKnight); NES Customer | 4h |
| 97 | 3.4.2.10 | Schedule the backup of the appliance | 1d | 2026-08-31 08:00 | 2026-09-01 17:00 | 96 | Vinayak Sonkavada (CyberKnight); NES Customer | 8h |
| 98 | 3.5 | **UAT** | 5.4d | 2026-09-01 08:00 | 2026-09-09 17:00 | 67 | Vinayak Sonkavada (CyberKnight); NES Customer | 43.2h |
| 99 | 3.5.1 | Setup sample reporting dashboards on the Reporting server | 0.2d | 2026-09-01 08:00 | 2026-09-01 17:00 |  | Vinayak Sonkavada (CyberKnight); NES Customer | 1.6h |
| 100 | 3.5.2 | Testing use cases with each module ( Illuminate web application, Office, Outlook, Desktop) and Test reporting dashboard for pilot PC's | 0.2d | 2026-09-01 08:00 | 2026-09-02 17:00 | 99 | Vinayak Sonkavada (CyberKnight); NES Customer | 1.6h |
| 101 | 3.5.3 | Testing and Fine Tuning Complete | 5d | 2026-09-02 08:00 | 2026-09-09 17:00 | 100 | Vinayak Sonkavada (CyberKnight); NES Customer | 40h |
| 102 | 3.6 | **Rollout & GO-Live** | 2d | 2026-09-09 08:00 | 2026-09-13 17:00 | 98 | Vinayak Sonkavada (CyberKnight); NES Customer | 16h |
| 103 | 3.6.1 | Testing 5 use cases with each module ( Illuminate web application, Office, Outlook, Desktop) and Test reporting dashboard for roll out PC's (5endpoints) | 1d | 2026-09-09 08:00 | 2026-09-10 17:00 | 15 | Vinayak Sonkavada (CyberKnight); NES Customer | 8h |
| 104 | 3.6.2 | Testing & Fine tuning | 1d | 2026-09-10 08:00 | 2026-09-13 17:00 | 103 | Vinayak Sonkavada (CyberKnight); NES Customer | 8h |
| 105 | 3.6.3 | Support for Registry Push via GPO across the Pilot Endpoints | 1d | 2026-09-10 08:00 | 2026-09-13 17:00 | 104SS | Vinayak Sonkavada (CyberKnight); NES Customer | 8h |
| 106 | 3.6.4 | Support for Pilot Agents roll out(5) via GPO | 1d | 2026-09-10 08:00 | 2026-09-13 17:00 | 105SS | Vinayak Sonkavada (CyberKnight); NES Customer | 8h |
| 107 | 3.6.5 | Project GO-Live | 1d | 2026-09-13 08:00 | 2026-09-13 17:00 | 105, 106 | Vinayak Sonkavada (CyberKnight); NES Customer | 8h |
| 108 | 4.1 | Knowledge Transfer | 1d | 2026-09-13 08:00 | 2026-09-14 17:00 | 107 | Vinayak Sonkavada (CyberKnight); NES Customer | 8h |
| 109 | 4.2 | Submission of Implementation Guide document | 1d | 2026-09-14 08:00 | 2026-09-15 17:00 | 108 | Vinayak Sonkavada (CyberKnight); NES Customer | 8h |
| 110 | 4.3 | Project Sign-Off | 1d | 2026-09-15 08:00 | 2026-09-16 17:00 | 109 | Vinayak Sonkavada (CyberKnight); NES Customer | 8h |

Notes:
- 87: WBS: 1.3.4.2
- 88: WBS: 1.3.4.2.1
- 89: WBS: 1.3.4.2.2
- 90: WBS: 1.3.4.2.3
- 91: WBS: 1.3.4.2.4
- 92: WBS: 1.3.4.2.5
- 93: WBS: 1.3.4.2.6
- 94: WBS: 1.3.4.2.7
- 95: WBS: 1.3.4.2.8
- 96: WBS: 1.3.4.2.9
- 97: WBS: 1.3.4.2.10
- 98: WBS: 1.3.5
- 99: WBS: 1.3.5.1
- 100: WBS: 1.3.5.2
- 101: WBS: 1.3.5.3
- 102: WBS: 1.3.6
- 103: WBS: 1.3.6.1
- 104: WBS: 1.3.6.2
- 105: WBS: 1.3.6.3
- 106: WBS: 1.3.6.4
- 107: WBS: 1.3.6.5
- 108: WBS: 1.4.1
- 109: WBS: 1.4.2
- 110: WBS: 1.4.3
